| id | projectCode | importId | taskCode | wbsCode | activityName | activityType | status | originalDuration | remainingDuration | actualDuration | baselineStartDate | baselineFinishDate | plannedStartDate | plannedFinishDate | actualStartDate | actualFinishDate | predecessors | successors | successorDetails | calendarName | isCritical | percentComplete | startVarianceDays | finishVarianceDays | createdDate | modifiedDate | remainingFloat | freeFloat |
| --- | --- | --- | --- | --- | --- | --- | --- | --- | --- | --- | --- | --- | --- | --- | --- | --- | --- | --- | --- | --- | --- | --- | --- | --- | --- | --- | --- | --- |
| 1 | TWNU07 | 1 | SITEWORK-10 | TWNU07.8.8.2 | MOBILIZATION | Task Dependent | Completed | 2 | 0 | 2 | 2024-10-29T08:00:00.000Z | 2024-10-30T16:00:00.000Z | 2024-10-29T08:00:00.000Z | 2024-10-30T16:00:00.000Z | 2024-10-29T08:00:00.000Z | 2024-10-30T16:00:00.000Z | PRECON-30, SM-NTP | SITEWORK-40, SITEWORK-20 | SITEWORK-40 FS 0, SITEWORK-20 SS 0 | 5D w/Hol 1222-1226 | True | 100 | 0 | 0 | 2025-01-15T10:00:00.000Z | 2025-01-15T10:00:00.000Z |  |  |
| 2 | TWNU07 | 1 | SITEWORK-50 | TWNU07.8.8.2 | BUILD PAD | Task Dependent | Completed | 23 | 0 | 43 | 2024-11-11T08:00:00.000Z | 2024-12-13T16:00:00.000Z | 2024-11-11T08:00:00.000Z | 2024-12-13T16:00:00.000Z | 2024-11-11T08:00:00.000Z | 2025-01-14T16:00:00.000Z | SITEWORK-40, SITEWORK-70 | SITEUTLS-10, SITEUTLS-40 | SITEUTLS-10 FS 0, SITEUTLS-40 FS 0 | 5D w/Hol 1222-1226 | True | 100 | 0 | 22 | 2025-01-15T10:00:00.000Z | 2025-01-15T10:00:00.000Z |  |  |
| 3 | TWNU07 | 1 | SITEWORK-70 | TWNU07.8.8.2 | SITE DEVELOPMENT TO BUILDING PAD | Task Dependent | Completed | 10 | 0 | 22 | 2024-11-11T08:00:00.000Z | 2024-11-22T16:00:00.000Z | 2024-11-11T08:00:00.000Z | 2024-11-22T16:00:00.000Z | 2024-11-11T08:00:00.000Z | 2024-12-12T16:00:00.000Z | SITEWORK-30 | P1A-C1-FNDS-10, SITEUTLS-20, SITEWORK-50 | P1A-C1-FNDS-10 FS 0, SITEUTLS-20 FS 0, SITEWORK-50 FF 0 | 5D w/Hol 1222-1226 | True | 100 | 0 | 14 | 2025-01-15T10:00:00.000Z | 2025-01-15T10:00:00.000Z |  |  |
| 4 | TWNU07 | 1 | SITEWORK-60 | TWNU07.8.8.2 | EXCAVATE LAKE | Task Dependent | Completed | 5 | 0 | 5 | 2024-12-19T08:00:00.000Z | 2024-12-26T16:00:00.000Z | 2024-12-19T08:00:00.000Z | 2024-12-26T16:00:00.000Z | 2024-12-19T08:00:00.000Z | 2024-12-26T16:00:00.000Z | PERMIT-40 | SITEUTLS-10, SITEUTLS-40 | SITEUTLS-10 FS 0, SITEUTLS-40 FS 0 | 5D w/Hol 1222-1226 | True | 100 | 0 | 0 | 2025-01-15T10:00:00.000Z | 2025-01-15T10:00:00.000Z |  |  |
| 5 | TWNU07 | 1 | SITEUTLS-10 | TWNU07.8.8.2 | STORM | Task Dependent | In Progress | 8 | 3 | 66 | 2025-01-15T08:00:00.000Z | 2025-01-24T16:00:00.000Z | 2025-01-15T08:00:00.000Z | 2025-01-24T16:00:00.000Z | 2025-01-15T08:00:00.000Z |  | SITEWORK-50, SITEWORK-60 | SITEUTLS-40, SITEUTLS-30 | SITEUTLS-40 FS 0, SITEUTLS-30 FS 0 | 5D w/Hol 1222-1226 |  | 96 | 0 |  | 2025-01-15T10:00:00.000Z | 2025-01-15T10:00:00.000Z | 136 | 0 |
| 6 | TWNU07 | 1 | SITEUTLS-40 | TWNU07.8.8.2 | WATER DISTRIBUTION & INSPECT | Task Dependent | Not Started | 7 | 7 | 0 | 2025-05-07T08:00:00.000Z | 2025-05-15T16:00:00.000Z | 2025-05-07T08:00:00.000Z | 2025-05-15T16:00:00.000Z |  |  | SITEWORK-50, SITEWORK-60, SITEUTLS-10, SITEUTLS-30 | SITEUTLS-50 | SITEUTLS-50 FS 0 | 5D w/Hol 1222-1226 |  | 0 | 0 | 0 | 2025-01-15T10:00:00.000Z | 2025-01-15T10:00:00.000Z | 130 | 0 |
| 7 | TWNU07 | 1 | SITEWORK-30 | TWNU07.8.8.2 | TREE RELOCATION | Task Dependent | Completed | 17 | 0 | 17 | 2024-11-19T08:00:00.000Z | 2024-12-13T16:00:00.000Z | 2024-11-19T08:00:00.000Z | 2024-12-13T16:00:00.000Z | 2024-11-19T08:00:00.000Z | 2024-12-13T16:00:00.000Z | SITEWORK-20 | SITEWORK-70 | SITEWORK-70 FF 0 | 5D w/Hol 1222-1226 | True | 100 | 0 | 0 | 2025-01-15T10:00:00.000Z | 2025-01-15T10:00:00.000Z |  |  |
| 8 | TWNU07 | 1 | SITEWORK-40 | TWNU07.8.8.2 | SITE CLEARING | Task Dependent | Completed | 18 | 0 | 18 | 2024-10-29T08:00:00.000Z | 2024-11-21T16:00:00.000Z | 2024-10-29T08:00:00.000Z | 2024-11-21T16:00:00.000Z | 2024-10-29T08:00:00.000Z | 2024-11-21T16:00:00.000Z | SITEWORK-10, SITEWORK-20 | SITEWORK-50 | SITEWORK-50 FF 5 | 5D w/Hol 1222-1226 | True | 100 | 0 | 0 | 2025-01-15T10:00:00.000Z | 2025-01-15T10:00:00.000Z |  |  |
| 9 | TWNU07 | 1 | SITEUTLS-30 | TWNU07.8.8.2 | FIRE LINES | Task Dependent | Not Started | 7 | 7 | 0 | 2025-04-30T08:00:00.000Z | 2025-05-08T16:00:00.000Z | 2025-04-30T08:00:00.000Z | 2025-05-08T16:00:00.000Z |  |  | SITEUTLS-20, PERMIT-20, SITEUTLS-10 | SITEUTLS-40 | SITEUTLS-40 FF 5 | 5D w/Hol 1222-1226 |  | 0 | 0 | 0 | 2025-01-15T10:00:00.000Z | 2025-01-15T10:00:00.000Z | 130 | 0 |
| 10 | TWNU07 | 1 | SITEUTLS-20 | TWNU07.8.8.2 | SANITARY | Task Dependent | In Progress | 8 | 9 | 28 | 2025-03-10T08:00:00.000Z | 2025-03-19T16:00:00.000Z | 2025-03-10T08:00:00.000Z | 2025-03-19T16:00:00.000Z | 2025-03-10T08:00:00.000Z |  | SITEWORK-70, PERMIT-20 | SITEUTLS-30, SITEUTLS-80 | SITEUTLS-30 FS 0, SITEUTLS-80 SS 0 | 5D w/Hol 1222-1226 | True | 76 | 0 |  | 2025-01-15T10:00:00.000Z | 2025-01-15T10:00:00.000Z | -50 | 0 |
| 11 | TWNU07 | 1 | SITEUTLS-50 | TWNU07.8.8.2 | WATER METER & BACKFLOW | Task Dependent | Not Started | 5 | 5 | 0 | 2025-05-16T08:00:00.000Z | 2025-05-22T16:00:00.000Z | 2025-05-16T08:00:00.000Z | 2025-05-22T16:00:00.000Z |  |  | SITEUTLS-40 | SITEUTLS-60 | SITEUTLS-60 FS 0 | 5D w/Hol 1222-1226 |  | 0 | 0 | 0 | 2025-01-15T10:00:00.000Z | 2025-01-15T10:00:00.000Z | 130 | 0 |
| 12 | TWNU07 | 1 | SITEUTLS-60 | TWNU07.8.8.2 | IRRIGATION MAIN LINE | Task Dependent | Not Started | 10 | 10 | 0 | 2025-05-23T08:00:00.000Z | 2025-06-05T16:00:00.000Z | 2025-05-23T08:00:00.000Z | 2025-06-05T16:00:00.000Z |  |  | SITEUTLS-50 | SITEUTLS-70 | SITEUTLS-70 FS 0 | 5D w/Hol 1222-1226 |  | 0 | 0 | 0 | 2025-01-15T10:00:00.000Z | 2025-01-15T10:00:00.000Z | 120 | 0 |
| 13 | TWNU07 | 1 | SITEUTLS-70 | TWNU07.8.8.2 | IRRIGATION LATERALS & HEADS | Task Dependent | Not Started | 15 | 15 | 0 | 2025-06-06T08:00:00.000Z | 2025-06-26T16:00:00.000Z | 2025-06-06T08:00:00.000Z | 2025-06-26T16:00:00.000Z |  |  | SITEUTLS-60 | LANDSCAPE-10 | LANDSCAPE-10 FS 0 | 5D w/Hol 1222-1226 |  | 0 | 0 | 0 | 2025-01-15T10:00:00.000Z | 2025-01-15T10:00:00.000Z | 105 | 0 |
| 14 | TWNU07 | 1 | SITEWORK-20 | TWNU07.8.8.2 | EROSION CONTROL / SILT FENCE | Task Dependent | Completed | 27 | 0 | 32 | 2024-11-05T08:00:00.000Z | 2024-12-13T16:00:00.000Z | 2024-11-05T08:00:00.000Z | 2024-12-13T16:00:00.000Z | 2024-11-05T08:00:00.000Z | 2024-12-20T16:00:00.000Z | SITEWORK-10 | SITEWORK-40, SITEWORK-30 | SITEWORK-40 SS 0, SITEWORK-30 SS 0 | 5D w/Hol 1222-1226 | True | 100 | 0 | 5 | 2025-01-15T10:00:00.000Z | 2025-01-15T10:00:00.000Z |  |  |
| 15 | TWNU07 | 1 | SITEUTLS-80 | TWNU07.8.8.2 | GREASE TRAP | Task Dependent | Completed | 3 | 0 | 3 | 2025-03-10T08:00:00.000Z | 2025-03-12T16:00:00.000Z | 2025-03-10T08:00:00.000Z | 2025-03-12T16:00:00.000Z | 2025-03-10T08:00:00.000Z | 2025-03-12T16:00:00.000Z | SITEUTLS-20 | SITEUTLS-90 | SITEUTLS-90 FS 0 | 5D w/Hol 1222-1226 | True | 100 | 0 | 0 | 2025-01-15T10:00:00.000Z | 2025-01-15T10:00:00.000Z |  |  |
| 16 | TWNU07 | 1 | SITEUTLS-90 | TWNU07.8.8.2 | LIFT STATION | Task Dependent | Completed | 5 | 0 | 5 | 2025-03-13T08:00:00.000Z | 2025-03-19T16:00:00.000Z | 2025-03-13T08:00:00.000Z | 2025-03-19T16:00:00.000Z | 2025-03-13T08:00:00.000Z | 2025-03-19T16:00:00.000Z | SITEUTLS-80 | P1A-PLMB-10 | P1A-PLMB-10 FS 0 | 5D w/Hol 1222-1226 | True | 100 | 0 | 0 | 2025-01-15T10:00:00.000Z | 2025-01-15T10:00:00.000Z |  |  |
| 17 | TWNU07 | 1 | P1A-C1-FNDS-10 | TWNU07.8.8.3 | FOUNDATIONS - PHASE 1A | Task Dependent | Completed | 20 | 0 | 25 | 2024-12-13T08:00:00.000Z | 2025-01-10T16:00:00.000Z | 2024-12-13T08:00:00.000Z | 2025-01-10T16:00:00.000Z | 2024-12-16T08:00:00.000Z | 2025-01-21T16:00:00.000Z | SITEWORK-70 | P1A-C1-SLAB-10 | P1A-C1-SLAB-10 FS 0 | 5D w/Hol 1222-1226 | True | 100 | 1 | 7 | 2025-01-15T10:00:00.000Z | 2025-01-15T10:00:00.000Z |  |  |
| 18 | TWNU07 | 1 | P1A-C1-SLAB-10 | TWNU07.8.8.3 | SLAB ON GRADE - PHASE 1A | Task Dependent | In Progress | 15 | 4 | 18 | 2025-01-13T08:00:00.000Z | 2025-01-31T16:00:00.000Z | 2025-01-22T08:00:00.000Z | 2025-02-11T16:00:00.000Z | 2025-01-22T08:00:00.000Z |  | P1A-C1-FNDS-10 | P1A-C1-FRAMING-10 | P1A-C1-FRAMING-10 FS 0 | 5D w/Hol 1222-1226 | True | 82 | 7 |  | 2025-01-15T10:00:00.000Z | 2025-01-15T10:00:00.000Z | -8 | 0 |
| 19 | TWNU07 | 1 | P1A-C1-FRAMING-10 | TWNU07.8.8.3 | WOOD FRAMING - PHASE 1A | Task Dependent | Not Started | 30 | 30 | 0 | 2025-02-03T08:00:00.000Z | 2025-03-14T16:00:00.000Z | 2025-02-12T08:00:00.000Z | 2025-03-25T16:00:00.000Z |  |  | P1A-C1-SLAB-10 | P1A-C1-ROOF-10, P1A-C1-ROUGH-10 | P1A-C1-ROOF-10 FS 0, P1A-C1-ROUGH-10 SS 10 | 5D w/Hol 1222-1226 | True | 0 | 7 | 7 | 2025-01-15T10:00:00.000Z | 2025-01-15T10:00:00.000Z | -8 | 0 |
| 20 | TWNU07 | 1 | P1A-C1-ROOF-10 | TWNU07.8.8.3 | ROOF SHEATHING & DRY-IN - PHASE 1A | Task Dependent | Not Started | 12 | 12 | 0 | 2025-03-17T08:00:00.000Z | 2025-04-01T16:00:00.000Z | 2025-03-26T08:00:00.000Z | 2025-04-10T16:00:00.000Z |  |  | P1A-C1-FRAMING-10 | P1A-EXT-STUCCO-10, P1A-C1-ROOF-20 | P1A-EXT-STUCCO-10 FS 0, P1A-C1-ROOF-20 FS 5 | 5D w/Hol 1222-1226 | True | 0 | 7 | 7 | 2025-01-15T10:00:00.000Z | 2025-01-15T10:00:00.000Z | -8 | 0 |
| 21 | TWNU07 | 1 | P1A-C1-ROOF-20 | TWNU07.8.8.3 | ROOF TILE INSTALL - PHASE 1A | Task Dependent | Not Started | 15 | 15 | 0 | 2025-04-08T08:00:00.000Z | 2025-04-28T16:00:00.000Z | 2025-04-17T08:00:00.000Z | 2025-05-07T16:00:00.000Z |  |  | P1A-C1-ROOF-10 | P1A-EXT-GUTTER-10 | P1A-EXT-GUTTER-10 FS 0 | 5D w/Hol 1222-1226 | True | 0 | 7 | 7 | 2025-01-15T10:00:00.000Z | 2025-01-15T10:00:00.000Z | -3 | 0 |
| 22 | TWNU07 | 1 | P1A-C1-ROUGH-10 | TWNU07.8.8.3 | ROUGH PLUMBING - PHASE 1A | Task Dependent | Not Started | 10 | 10 | 0 | 2025-02-17T08:00:00.000Z | 2025-02-28T16:00:00.000Z | 2025-02-26T08:00:00.000Z | 2025-03-11T16:00:00.000Z |  |  | P1A-C1-FRAMING-10 | P1A-C1-ROUGH-20 | P1A-C1-ROUGH-20 FS 0 | 5D w/Hol 1222-1226 |  | 0 | 7 | 7 | 2025-01-15T10:00:00.000Z | 2025-01-15T10:00:00.000Z | 5 | 0 |
| 23 | TWNU07 | 1 | P1A-C1-ROUGH-20 | TWNU07.8.8.3 | ROUGH ELECTRICAL - PHASE 1A | Task Dependent | Not Started | 10 | 10 | 0 | 2025-03-03T08:00:00.000Z | 2025-03-14T16:00:00.000Z | 2025-03-12T08:00:00.000Z | 2025-03-25T16:00:00.000Z |  |  | P1A-C1-ROUGH-10 | P1A-C1-ROUGH-30 | P1A-C1-ROUGH-30 FS 0 | 5D w/Hol 1222-1226 |  | 0 | 7 | 7 | 2025-01-15T10:00:00.000Z | 2025-01-15T10:00:00.000Z | 5 | 0 |
| 24 | TWNU07 | 1 | P1A-C1-ROUGH-30 | TWNU07.8.8.3 | ROUGH HVAC - PHASE 1A | Task Dependent | Not Started | 8 | 8 | 0 | 2025-03-17T08:00:00.000Z | 2025-03-26T16:00:00.000Z | 2025-03-26T08:00:00.000Z | 2025-04-04T16:00:00.000Z |  |  | P1A-C1-ROUGH-20 | P1A-C1-INSUL-10 | P1A-C1-INSUL-10 FS 0 | 5D w/Hol 1222-1226 |  | 0 | 7 | 7 | 2025-01-15T10:00:00.000Z | 2025-01-15T10:00:00.000Z | 5 | 0 |
| 25 | TWNU07 | 1 | P1A-C1-INSUL-10 | TWNU07.8.8.3 | INSULATION - PHASE 1A | Task Dependent | Not Started | 5 | 5 | 0 | 2025-03-27T08:00:00.000Z | 2025-04-02T16:00:00.000Z | 2025-04-07T08:00:00.000Z | 2025-04-11T16:00:00.000Z |  |  | P1A-C1-ROUGH-30 | P1A-C1-DRYWALL-10 | P1A-C1-DRYWALL-10 FS 0 | 5D w/Hol 1222-1226 |  | 0 | 7 | 7 | 2025-01-15T10:00:00.000Z | 2025-01-15T10:00:00.000Z | 5 | 0 |
| 26 | TWNU07 | 1 | P1A-EXT-STUCCO-10 | TWNU07.8.8.4 | STUCCO LATH & SCRATCH - PHASE 1A | Task Dependent | Not Started | 15 | 15 | 0 | 2025-04-02T08:00:00.000Z | 2025-04-22T16:00:00.000Z | 2025-04-11T08:00:00.000Z | 2025-05-01T16:00:00.000Z |  |  | P1A-C1-ROOF-10 | P1A-EXT-STUCCO-20 | P1A-EXT-STUCCO-20 FS 0 | 5D w/Hol 1222-1226 | True | 0 | 7 | 7 | 2025-01-15T10:00:00.000Z | 2025-01-15T10:00:00.000Z | -8 | 0 |
| 27 | TWNU07 | 1 | P1A-EXT-STUCCO-20 | TWNU07.8.8.4 | STUCCO BROWN & FINISH - PHASE 1A | Task Dependent | Not Started | 12 | 12 | 0 | 2025-04-23T08:00:00.000Z | 2025-05-08T16:00:00.000Z | 2025-05-02T08:00:00.000Z | 2025-05-19T16:00:00.000Z |  |  | P1A-EXT-STUCCO-10 | P1A-EXT-PAINT-10 | P1A-EXT-PAINT-10 FS 0 | 5D w/Hol 1222-1226 | True | 0 | 7 | 7 | 2025-01-15T10:00:00.000Z | 2025-01-15T10:00:00.000Z | -8 | 0 |
| 28 | TWNU07 | 1 | P1A-EXT-PAINT-10 | TWNU07.8.8.4 | EXTERIOR PAINT - PHASE 1A | Task Dependent | Not Started | 10 | 10 | 0 | 2025-05-09T08:00:00.000Z | 2025-05-22T16:00:00.000Z | 2025-05-20T08:00:00.000Z | 2025-06-02T16:00:00.000Z |  |  | P1A-EXT-STUCCO-20 | P1A-EXT-AWNING-10, P1A-EXT-SHUTTER-10 | P1A-EXT-AWNING-10 FS 0, P1A-EXT-SHUTTER-10 FS 0 | 5D w/Hol 1222-1226 | True | 0 | 7 | 7 | 2025-01-15T10:00:00.000Z | 2025-01-15T10:00:00.000Z | -8 | 0 |
| 29 | TWNU07 | 1 | P1A-EXT-AWNING-10 | TWNU07.8.8.4 | AWNINGS & CANOPIES - PHASE 1A | Task Dependent | Not Started | 8 | 8 | 0 | 2025-05-23T08:00:00.000Z | 2025-06-03T16:00:00.000Z | 2025-06-03T08:00:00.000Z | 2025-06-12T16:00:00.000Z |  |  | P1A-EXT-PAINT-10 | P1A-EXT-STOREFRONT-10 | P1A-EXT-STOREFRONT-10 FS 0 | 5D w/Hol 1222-1226 | True | 0 | 7 | 7 | 2025-01-15T10:00:00.000Z | 2025-01-15T10:00:00.000Z | -8 | 0 |
| 30 | TWNU07 | 1 | P1A-EXT-SHUTTER-10 | TWNU07.8.8.4 | SHUTTERS & TRIM - PHASE 1A | Task Dependent | Not Started | 6 | 6 | 0 | 2025-05-23T08:00:00.000Z | 2025-06-02T16:00:00.000Z | 2025-06-03T08:00:00.000Z | 2025-06-10T16:00:00.000Z |  |  | P1A-EXT-PAINT-10 | P1A-EXT-STOREFRONT-10 | P1A-EXT-STOREFRONT-10 FS 0 | 5D w/Hol 1222-1226 |  | 0 | 7 | 6 | 2025-01-15T10:00:00.000Z | 2025-01-15T10:00:00.000Z | 2 | 2 |
| 31 | TWNU07 | 1 | P1A-EXT-GUTTER-10 | TWNU07.8.8.4 | GUTTERS & DOWNSPOUTS - PHASE 1A | Task Dependent | Not Started | 5 | 5 | 0 | 2025-04-29T08:00:00.000Z | 2025-05-05T16:00:00.000Z | 2025-05-08T08:00:00.000Z | 2025-05-14T16:00:00.000Z |  |  | P1A-C1-ROOF-20 | P1A-EXT-STOREFRONT-10 | P1A-EXT-STOREFRONT-10 FS 10 | 5D w/Hol 1222-1226 |  | 0 | 7 | 7 | 2025-01-15T10:00:00.000Z | 2025-01-15T10:00:00.000Z | 15 | 5 |
| 32 | TWNU07 | 1 | P1A-EXT-STOREFRONT-10 | TWNU07.8.8.4 | STOREFRONT GLAZING - PHASE 1A | Task Dependent | Not Started | 10 | 10 | 0 | 2025-06-04T08:00:00.000Z | 2025-06-17T16:00:00.000Z | 2025-06-13T08:00:00.000Z | 2025-06-26T16:00:00.000Z |  |  | P1A-EXT-AWNING-10, P1A-EXT-SHUTTER-10, P1A-EXT-GUTTER-10 | P1A-EXT-BRICK-10 | P1A-EXT-BRICK-10 FS 0 | 5D w/Hol 1222-1226 | True | 0 | 7 | 7 | 2025-01-15T10:00:00.000Z | 2025-01-15T10:00:00.000Z | -8 | 0 |
| 33 | TWNU07 | 1 | P1A-EXT-BRICK-10 | TWNU07.8.8.4 | BRICK VENEER - PHASE 1A | Task Dependent | Not Started | 15 | 15 | 0 | 2025-06-18T08:00:00.000Z | 2025-07-08T16:00:00.000Z | 2025-06-27T08:00:00.000Z | 2025-07-17T16:00:00.000Z |  |  | P1A-EXT-STOREFRONT-10 | P1A-EXT-BRICK-20 | P1A-EXT-BRICK-20 FS 0 | 5D w/Hol 1222-1226 | True | 0 | 7 | 7 | 2025-01-15T10:00:00.000Z | 2025-01-15T10:00:00.000Z | -8 | 0 |
| 34 | TWNU07 | 1 | P1A-EXT-BRICK-20 | TWNU07.8.8.4 | BRICK CAPS & SILLS - PHASE 1A | Task Dependent | Not Started | 5 | 5 | 0 | 2025-07-09T08:00:00.000Z | 2025-07-15T16:00:00.000Z | 2025-07-18T08:00:00.000Z | 2025-07-24T16:00:00.000Z |  |  | P1A-EXT-BRICK-10 | P1A-EXT-CLEAN-10 | P1A-EXT-CLEAN-10 FS 0 | 5D w/Hol 1222-1226 | True | 0 | 7 | 7 | 2025-01-15T10:00:00.000Z | 2025-01-15T10:00:00.000Z | -8 | 0 |
| 35 | TWNU07 | 1 | P1A-EXT-CLEAN-10 | TWNU07.8.8.4 | EXTERIOR CLEAN & PUNCH - PHASE 1A | Task Dependent | Not Started | 5 | 5 | 0 | 2025-07-16T08:00:00.000Z | 2025-07-22T16:00:00.000Z | 2025-07-25T08:00:00.000Z | 2025-07-31T16:00:00.000Z |  |  | P1A-EXT-BRICK-20 | P1A-FINAL-10 | P1A-FINAL-10 FS 0 | 5D w/Hol 1222-1226 | True | 0 | 7 | 7 | 2025-01-15T10:00:00.000Z | 2025-01-15T10:00:00.000Z | -8 | 0 |
| 36 | TWNU07 | 1 | P1A-C1-DRYWALL-10 | TWNU07.8.8.3 | DRYWALL HANG - PHASE 1A | Task Dependent | Not Started | 10 | 10 | 0 | 2025-04-03T08:00:00.000Z | 2025-04-16T16:00:00.000Z | 2025-04-14T08:00:00.000Z | 2025-04-25T16:00:00.000Z |  |  | P1A-C1-INSUL-10 | P1A-C1-DRYWALL-20 | P1A-C1-DRYWALL-20 FS 0 | 5D w/Hol 1222-1226 |  | 0 | 7 | 7 | 2025-01-15T10:00:00.000Z | 2025-01-15T10:00:00.000Z | 5 | 0 |
| 37 | TWNU07 | 1 | P1A-C1-DRYWALL-20 | TWNU07.8.8.3 | DRYWALL TAPE & FINISH - PHASE 1A | Task Dependent | Not Started | 8 | 8 | 0 | 2025-04-17T08:00:00.000Z | 2025-04-28T16:00:00.000Z | 2025-04-28T08:00:00.000Z | 2025-05-07T16:00:00.000Z |  |  | P1A-C1-DRYWALL-10 | P1A-C1-INTPAINT-10 | P1A-C1-INTPAINT-10 FS 0 | 5D w/Hol 1222-1226 |  | 0 | 7 | 7 | 2025-01-15T10:00:00.000Z | 2025-01-15T10:00:00.000Z | 5 | 0 |
| 38 | TWNU07 | 1 | P1A-C1-INTPAINT-10 | TWNU07.8.8.3 | INTERIOR PAINT PRIME & 1ST COAT - PHASE 1A | Task Dependent | Not Started | 7 | 7 | 0 | 2025-04-29T08:00:00.000Z | 2025-05-07T16:00:00.000Z | 2025-05-08T08:00:00.000Z | 2025-05-16T16:00:00.000Z |  |  | P1A-C1-DRYWALL-20 | P1A-C1-TILE-10, P1A-C1-CABINETS-10 | P1A-C1-TILE-10 FS 0, P1A-C1-CABINETS-10 FS 0 | 5D w/Hol 1222-1226 |  | 0 | 7 | 7 | 2025-01-15T10:00:00.000Z | 2025-01-15T10:00:00.000Z | 5 | 0 |
| 39 | TWNU07 | 1 | P1A-C1-TILE-10 | TWNU07.8.8.3 | TILE FLOOR & WALL - PHASE 1A | Task Dependent | Not Started | 10 | 10 | 0 | 2025-05-08T08:00:00.000Z | 2025-05-21T16:00:00.000Z | 2025-05-19T08:00:00.000Z | 2025-05-30T16:00:00.000Z |  |  | P1A-C1-INTPAINT-10 | P1A-C1-FLOORING-10 | P1A-C1-FLOORING-10 FS 0 | 5D w/Hol 1222-1226 |  | 0 | 7 | 7 | 2025-01-15T10:00:00.000Z | 2025-01-15T10:00:00.000Z | 5 | 0 |
| 40 | TWNU07 | 1 | P1A-C1-CABINETS-10 | TWNU07.8.8.3 | CABINETS & MILLWORK - PHASE 1A | Task Dependent | Not Started | 8 | 8 | 0 | 2025-05-08T08:00:00.000Z | 2025-05-19T16:00:00.000Z | 2025-05-19T08:00:00.000Z | 2025-05-28T16:00:00.000Z |  |  | P1A-C1-INTPAINT-10 | P1A-C1-COUNTERTOP-10 | P1A-C1-COUNTERTOP-10 FS 0 | 5D w/Hol 1222-1226 |  | 0 | 7 | 7 | 2025-01-15T10:00:00.000Z | 2025-01-15T10:00:00.000Z | 7 | 2 |
| 41 | TWNU07 | 1 | P1A-C1-FLOORING-10 | TWNU07.8.8.3 | LVP FLOORING - PHASE 1A | Task Dependent | Not Started | 8 | 8 | 0 | 2025-05-22T08:00:00.000Z | 2025-06-02T16:00:00.000Z | 2025-06-02T08:00:00.000Z | 2025-06-11T16:00:00.000Z |  |  | P1A-C1-TILE-10 | P1A-C1-TRIM-10 | P1A-C1-TRIM-10 FS 0 | 5D w/Hol 1222-1226 |  | 0 | 7 | 7 | 2025-01-15T10:00:00.000Z | 2025-01-15T10:00:00.000Z | 5 | 0 |
| 42 | TWNU07 | 1 | P1A-C1-COUNTERTOP-10 | TWNU07.8.8.3 | COUNTERTOPS - PHASE 1A | Task Dependent | Not Started | 5 | 5 | 0 | 2025-05-20T08:00:00.000Z | 2025-05-26T16:00:00.000Z | 2025-05-29T08:00:00.000Z | 2025-06-04T16:00:00.000Z |  |  | P1A-C1-CABINETS-10 | P1A-C1-TRIM-10 | P1A-C1-TRIM-10 FS 3 | 5D w/Hol 1222-1226 |  | 0 | 7 | 7 | 2025-01-15T10:00:00.000Z | 2025-01-15T10:00:00.000Z | 12 | 5 |
| 43 | TWNU07 | 1 | P1A-C1-TRIM-10 | TWNU07.8.8.3 | FINISH TRIM & HARDWARE - PHASE 1A | Task Dependent | Not Started | 10 | 10 | 0 | 2025-06-03T08:00:00.000Z | 2025-06-16T16:00:00.000Z | 2025-06-12T08:00:00.000Z | 2025-06-25T16:00:00.000Z |  |  | P1A-C1-FLOORING-10, P1A-C1-COUNTERTOP-10 | P1A-C1-INTPAINT-20 | P1A-C1-INTPAINT-20 FS 0 | 5D w/Hol 1222-1226 |  | 0 | 7 | 7 | 2025-01-15T10:00:00.000Z | 2025-01-15T10:00:00.000Z | 5 | 0 |
| 44 | TWNU07 | 1 | P1A-C1-INTPAINT-20 | TWNU07.8.8.3 | INTERIOR PAINT FINAL COAT - PHASE 1A | Task Dependent | Not Started | 5 | 5 | 0 | 2025-06-17T08:00:00.000Z | 2025-06-23T16:00:00.000Z | 2025-06-26T08:00:00.000Z | 2025-07-02T16:00:00.000Z |  |  | P1A-C1-TRIM-10 | P1A-C1-MEPFINAL-10 | P1A-C1-MEPFINAL-10 FS 0 | 5D w/Hol 1222-1226 |  | 0 | 7 | 7 | 2025-01-15T10:00:00.000Z | 2025-01-15T10:00:00.000Z | 5 | 0 |
| 45 | TWNU07 | 1 | P1A-C1-MEPFINAL-10 | TWNU07.8.8.3 | MEP TRIM & FINALS - PHASE 1A | Task Dependent | Not Started | 7 | 7 | 0 | 2025-06-24T08:00:00.000Z | 2025-07-02T16:00:00.000Z | 2025-07-03T08:00:00.000Z | 2025-07-11T16:00:00.000Z |  |  | P1A-C1-INTPAINT-20 | P1A-C1-CLEAN-10 | P1A-C1-CLEAN-10 FS 0 | 5D w/Hol 1222-1226 |  | 0 | 7 | 7 | 2025-01-15T10:00:00.000Z | 2025-01-15T10:00:00.000Z | 5 | 0 |
| 46 | TWNU07 | 1 | P1A-C1-CLEAN-10 | TWNU07.8.8.3 | INTERIOR CLEAN & PUNCH - PHASE 1A | Task Dependent | Not Started | 5 | 5 | 0 | 2025-07-03T08:00:00.000Z | 2025-07-09T16:00:00.000Z | 2025-07-14T08:00:00.000Z | 2025-07-18T16:00:00.000Z |  |  | P1A-C1-MEPFINAL-10 | P1A-FINAL-10 | P1A-FINAL-10 FS 0 | 5D w/Hol 1222-1226 |  | 0 | 7 | 7 | 2025-01-15T10:00:00.000Z | 2025-01-15T10:00:00.000Z | 5 | 0 |
| 47 | TWNU07 | 1 | P1A-FINAL-10 | TWNU07.8.8.5 | FINAL INSPECTIONS - PHASE 1A | Task Dependent | Not Started | 5 | 5 | 0 | 2025-07-23T08:00:00.000Z | 2025-07-29T16:00:00.000Z | 2025-08-01T08:00:00.000Z | 2025-08-07T16:00:00.000Z |  |  | P1A-EXT-CLEAN-10, P1A-C1-CLEAN-10 | P1A-FINAL-20 | P1A-FINAL-20 FS 0 | 5D w/Hol 1222-1226 | True | 0 | 7 | 7 | 2025-01-15T10:00:00.000Z | 2025-01-15T10:00:00.000Z | -8 | 0 |
| 48 | TWNU07 | 1 | P1A-FINAL-20 | TWNU07.8.8.5 | TCO / CO - PHASE 1A | Task Dependent | Not Started | 3 | 3 | 0 | 2025-07-30T08:00:00.000Z | 2025-08-01T16:00:00.000Z | 2025-08-08T08:00:00.000Z | 2025-08-12T16:00:00.000Z |  |  | P1A-FINAL-10 | P1A-FINAL-30 | P1A-FINAL-30 FS 0 | 5D w/Hol 1222-1226 | True | 0 | 7 | 7 | 2025-01-15T10:00:00.000Z | 2025-01-15T10:00:00.000Z | -8 | 0 |
| 49 | TWNU07 | 1 | P1A-FINAL-30 | TWNU07.8.8.5 | OWNER TURNOVER - PHASE 1A | Task Dependent | Not Started | 2 | 2 | 0 | 2025-08-04T08:00:00.000Z | 2025-08-05T16:00:00.000Z | 2025-08-13T08:00:00.000Z | 2025-08-14T16:00:00.000Z |  |  | P1A-FINAL-20 |  |  | 5D w/Hol 1222-1226 | True | 0 | 7 | 7 | 2025-01-15T10:00:00.000Z | 2025-01-15T10:00:00.000Z | -8 | 0 |
| 50 | TWNU07 | 1 | PERMIT-40 | TWNU07.8.8.1 | LAKE EXCAVATION PERMIT | Task Dependent | Completed | 30 | 0 | 30 | 2024-11-04T08:00:00.000Z | 2024-12-16T16:00:00.000Z | 2024-11-04T08:00:00.000Z | 2024-12-16T16:00:00.000Z | 2024-11-04T08:00:00.000Z | 2024-12-16T16:00:00.000Z | SM-NTP | SITEWORK-60 | SITEWORK-60 FS 0 | 5D w/Hol 1222-1226 | True | 100 | 0 | 0 | 2025-01-15T10:00:00.000Z | 2025-01-15T10:00:00.000Z |  |  |
